# 软件开发

Schedule from MS Project, 2017-03-01 to 2017-06-23, A marks actual dates.

## Calendars

- 标准: Mon-Fri 08:00-12:00, 13:00-17:00; Sat-Sun off. Exceptions (off unless hours are given): 2017-04-01 08:00-12:00, 13:00-17:00, 2017-04-22 08:00-12:00, 13:00-17:00, 2017-04-29 08:00-12:00, 13:00-17:00, 2017-05-07 08:00-12:00, 13:00-17:00, 2017-05-14 08:00-12:00, 13:00-17:00, 2017-05-20 08:00-12:00, 13:00-17:00.

## Resources

| Resource |
| --- |
| 管理人员 |
| 项目经理 |
| 分析人员 |
| 开发人员 |
| 测试人员 |
| 培训人员 |
| 技术联络人员 |
| 部署小组 |
| 全体开发人员 |
| 黎文彬 |
| 周秦春 |

## Schedule

| ID | WBS | Task | Type | Duration | Start | Finish | Predecessors | Complete | Remaining | Actual finish | Total slack | Free slack | Constraint | Resources | Work | Actual work |
| --- | --- | --- | --- | --- | --- | --- | --- | --- | --- | --- | --- | --- | --- | --- | --- | --- |
| 1 | 1 | **项目立项准备** |  | 8d? | 2017-03-01 A | 2017-03-10 |  | 100% |  | 2017-03-08 |  |  |  |  | 64h | 64h |
| 2 | 1.1 | 讨论项目课题 | manual | 3d | 2017-03-01 A | 2017-03-03 A |  | 100% |  |  |  |  | finish no earlier than 2017-03-08 | 周秦春; 黎文彬 | 40h | 40h |
| 3 | 1.2 | 确定项目开发计划 | manual | 3d | 2017-03-05 A | 2017-03-08 A |  | 100% |  |  |  |  |  | 黎文彬; 周秦春 | 24h | 24h |
| 4 | 2 | **分析/软件需求** |  | 16d? | 2017-03-15 A | 2017-04-04 |  | 35% | 10.47d? |  | 63d |  |  |  | 218.4h | 60h |
| 5 | 2.1 | 编写用户场景故事 |  | 2d | 2017-03-15 A | 2017-03-16 |  |  | 2d |  | 0d |  | finish no earlier than 2017-03-16 | 黎文彬; 周秦春 | 32h |  |
| 6 | 2.2 | **获取软件需求** |  | 8d? | 2017-03-17 A | 2017-03-28 | 5 | 12% | 7.05d? |  | 69d |  |  |  | 134.4h | 16h |
| 7 | 2.2.1 | 编写软件需求 |  | 7.4d | 2017-03-17 A | 2017-03-28 |  | 14% | 6.4d |  | 69d |  | finish no earlier than 2017-03-28 | 黎文彬; 周秦春 | 118.4h | 16h |
| 8 | 2.2.2 | 评审业务需求（如有需求分歧） |  | 1d? | 2017-03-28 | 2017-03-28 |  |  |  |  | 69d |  | start no earlier than 2017-03-28 | 黎文彬; 周秦春 | 16h |  |
| 9 | 2.3 | 定制需求清单和规格说明 |  | 3.5d | 2017-03-30 A | 2017-04-03 A | 7 | 100% |  |  |  |  | finish no earlier than 2017-03-28 | 黎文彬 | 28h | 28h |
| 10 | 2.4 | 确认需求说明书 | milestone | 1d | 2017-04-03 A | 2017-04-03 A | 9 | 100% |  |  |  |  | finish no earlier than 2017-03-29 | 黎文彬; 周秦春 | 16h | 16h |
| 11 | 2.5 | 更新配置管理系统 |  | 1d? | 2017-04-04 | 2017-04-04 | 10 |  |  |  | 63d |  |  | 周秦春 | 8h |  |
| 12 | 3 | **系统设计** |  | 18d? | 2017-03-30 A | 2017-04-21 |  | 81% | 3.43d? |  | -2d | 0d |  | 周秦春; 黎文彬 | 400h | 352h |
| 13 | 3.1 | 系统模块确定 |  | 1d | 2017-03-30 A | 2017-03-30 A | 11 | 100% |  |  |  |  | finish no earlier than 2017-03-25 | 周秦春; 黎文彬 | 16h | 16h |
| 14 | 3.2 | 系统流程确定 |  | 2d | 2017-04-04 A | 2017-04-05 A | 13 | 100% |  |  |  |  | finish no earlier than 2017-04-05 | 黎文彬 | 16h | 16h |
| 15 | 3.3 | 编制概要设计 |  | 2d | 2017-04-06 A | 2017-04-07 A | 14 | 100% |  |  |  |  | start no earlier than 2017-04-06 | 周秦春; 黎文彬 | 32h | 32h |
| 16 | 3.4 | 审阅功能规范 | manual | 3d | 2017-04-12 A | 2017-04-14 A | 15 | 100% |  |  |  |  | finish no earlier than 2017-04-19 | 黎文彬 | 24h | 24h |
| 17 | 3.5 | 完成系统详细设计书并评审 | milestone | 0.5d | 2017-04-17 A | 2017-04-20 A |  | 100% |  |  |  |  | finish no earlier than 2017-04-20 | 周秦春; 黎文彬 | 8h | 8h |
| 18 | 3.6 | 编制编码规范 |  | 1d? | 2017-04-20 | 2017-04-20 | 17 |  |  |  | -2d | 0d | start no earlier than 2017-04-13 | 周秦春 | 8h |  |
| 19 | 3.7 | 更新配置管理系统 |  | 1d? | 2017-04-21 | 2017-04-21 | 18 |  |  |  | -2d | 0d | start no earlier than 2017-04-14 | 周秦春 | 8h |  |
| 20 | 4 | **开发** |  | 29d | 2017-04-20 A | 2017-05-23 | 12 | 52% | 13.89d |  | 1d | 0d |  |  | 560h | 288h |
| 21 | 4.1 | 审阅功能规范 |  | 1d | 2017-04-20 A | 2017-04-22 | 19 | 99% | 0d |  | 28d |  |  | 黎文彬; 周秦春 | 8h | 8h |
| 22 | 4.2 | 编写代码 |  | 17.5d | 2017-04-21 A | 2017-05-11 A | 21 | 100% |  |  |  |  | finish no earlier than 2017-05-10 | 周秦春; 黎文彬 | 280h | 280h |
| 23 | 4.3 | 开发人员测试（初步调试） |  | 17d | 2017-05-04 | 2017-05-23 |  |  |  |  | 1d | 0d | start no earlier than 2017-05-03 | 黎文彬; 周秦春 | 272h |  |
| 24 | 5 | **测试** |  | 35d? | 2017-05-05 | 2017-06-19 |  |  |  |  | 4d |  |  |  | 288h |  |
| 25 | 5.1 | 根据产品规范制定单元测试计划 |  | 2.5d | 2017-05-05 | 2017-05-08 | 16 |  |  |  | 36.5d |  | start no earlier than 2017-05-05 | 黎文彬; 周秦春 | 40h |  |
| 26 | 5.2 | 根据产品规范制定整体测试计划 |  | 1d | 2017-05-08 | 2017-05-08 |  |  |  |  | 36d |  | start no earlier than 2017-05-08 | 黎文彬 | 8h |  |

| ID | WBS | Task | Type | Duration | Start | Finish | Predecessors | Total slack | Free slack | Constraint | Resources | Work |
| --- | --- | --- | --- | --- | --- | --- | --- | --- | --- | --- | --- | --- |
| 27 | 5.3 | **单元测试** |  | 19d? | 2017-05-24 | 2017-06-19 | 20 | 1d | 0d |  |  | 240h |
| 28 | 5.3.1 | 测试模块是否符合要求 |  | 2d | 2017-05-24 | 2017-05-25 | 23 | 1d | 0d | start no earlier than 2017-04-29 | 黎文彬 | 16h |
| 29 | 5.3.2 | 找出不符合规范的异常情况 |  | 2d | 2017-05-26 | 2017-05-29 | 28 | 1d | 0d | start no earlier than 2017-04-30 | 黎文彬 | 16h |
| 30 | 5.3.3 | 修改代码 |  | 11d | 2017-05-30 | 2017-06-13 | 29 | 1d | 0d | start no earlier than 2017-05-23 | 黎文彬; 周秦春 | 176h |
| 31 | 5.3.4 | 重新测试经过修改的代码 |  | 2d | 2017-06-14 | 2017-06-15 | 30 | 1d | 0d | start no earlier than 2017-05-24 | 周秦春 | 16h |
| 32 | 5.3.5 | 更新配置管理系统 | milestone | 0d | 2017-06-15 | 2017-06-15 | 31 | 1d | 0d | start no earlier than 2017-05-26 | 黎文彬 |  |
| 33 | 5.3.6 | 单元测试完成 | milestone | 2d? | 2017-06-16 | 2017-06-19 | 32 | 1d | 0d | start no earlier than 2017-05-26 | 周秦春 | 16h |
| 34 | 6 | **集成测试** |  | 15d | 2017-05-30 | 2017-06-19 |  |  |  |  |  | 176h |
| 35 | 6.1 | 测试模块集成情况 |  | 3d | 2017-05-30 | 2017-06-01 |  | 15d | 0d | start no earlier than 2017-05-30 | 黎文彬 | 24h |
| 36 | 6.2 | 找出不符合规范的异常情况 |  | 1d | 2017-06-02 | 2017-06-02 | 35 | 15d |  | start no earlier than 2017-04-19 | 黎文彬 | 8h |
| 37 | 6.3 | 修改代码 |  | 7d | 2017-06-02 | 2017-06-12 |  | 9d |  | start no earlier than 2017-06-02 | 黎文彬; 周秦春 | 112h |
| 38 | 6.4 | 回归测试 | manual | 3d | 2017-06-13 | 2017-06-15 |  |  |  | start no earlier than 2017-06-13 | 周秦春 | 24h |
| 39 | 6.5 | 更新配置管理系统 |  | 1d? | 2017-06-16 | 2017-06-16 | 38 | 4d | 0d | start no earlier than 2017-05-05 | 周秦春 | 8h |
| 40 | 6.6 | 集成测试完成 |  | 1d? | 2017-06-19 | 2017-06-19 | 39 | 4d |  | start no earlier than 2017-05-08 |  |  |
| 41 | 7 | **验收** |  | 3d | 2017-06-20 | 2017-06-22 | 27 |  |  |  |  | 40h |
| 42 | 7.1 | 编写开发总结 |  | 0.5d | 2017-06-20 | 2017-06-20 |  | 2.5d | 0d | start no earlier than 2017-06-20 | 周秦春; 黎文彬 | 8h |
| 43 | 7.2 | 编写帮助文档 |  | 1d | 2017-06-20 | 2017-06-21 | 42 | 2.5d |  | start no earlier than 2017-04-06 | 黎文彬 | 8h |
| 44 | 7.3 | 编写用户手册 |  | 0.2w | 2017-06-19 | 2017-06-19 | 33FS-5% | 2d | 0d | start no earlier than 2017-04-07 | 黎文彬 | 8h |
| 45 | 7.4 | 更新配置管理系统 |  | 2d | 2017-06-20 | 2017-06-21 | 44 | 2d | 0d | start no earlier than 2017-04-10 | 周秦春 | 16h |
| 46 | 7.5 | 文档完成 | milestone | 0d | 2017-06-21 | 2017-06-21 | 45 | 2d |  | start no earlier than 2017-04-13 | 周秦春; 黎文彬 |  |
| 47 | 8 | **项目收尾** |  | 3d | 2017-06-21 | 2017-06-23 | 41 | 0d |  |  |  | 48h |
| 48 | 8.1 | 项目总结展示准备 | manual | 3d | 2017-06-21 | 2017-06-23 |  |  |  | start no earlier than 2017-06-21 | 黎文彬; 周秦春 | 48h |
| 49 | 8.2 | 回顾完成 | milestone | 0d | 2017-06-23 | 2017-06-23 | 48 | 0d |  | start no earlier than 2017-04-18 |  |  |
